# SpartitoXML

Schedule from MS Project, 2016-02-25 to 2016-06-03, A marks actual dates.

## Calendars

- Standard: Mon-Fri 09:00-13:00, 14:00-18:00; Sat-Sun off.

## Resources

| Resource |
| --- |
| larovere vittorio |
| morisco gabriele |
| beggio luca |
| lanzi andrea |

## Schedule

| ID | WBS | Task | Type | Duration | Start | Finish | Predecessors | Complete | Remaining | Actual start | Total slack | Free slack | Constraint | Resources | Work | Actual work |
| --- | --- | --- | --- | --- | --- | --- | --- | --- | --- | --- | --- | --- | --- | --- | --- | --- |
| 1 | 1 | **Spartito XML** |  | 71.5d | 2016-02-25 A | 2016-06-03 |  | 18% | 58.39d |  |  |  |  |  | 886h | 161h |
| 2 | 1.1 | **applicazione desktop** |  | 62d | 2016-02-25 A | 2016-05-20 |  | 44% | 34.42d |  |  |  |  |  | 326h | 145h |
| 3 | 1.1.1 | **area utente** |  | 39d | 2016-02-25 A | 2016-04-19 |  | 35% | 25.24d |  | 23d |  |  |  | 272h | 96h |
| 4 | 1.1.1.1 | **sezione: registrazione tag** |  | 39d | 2016-02-25 A | 2016-04-19 |  | 48% | 20.28d |  | 23d |  |  |  | 200h | 96h |
| 5 | 1.1.1.1.1 | **Registratore** |  | 39d | 2016-02-25 A | 2016-04-19 |  | 48% | 20.28d |  | 23d |  |  |  | 200h | 96h |
| 6 | 1.1.1.1.1.1 | **Riconoscimento BPM** |  | 2d | 2016-02-25 | 2016-02-26 |  |  |  |  | 60d |  |  |  | 16h |  |
| 7 | 1.1.1.1.1.1.1 | Gestore Timer |  | 2d | 2016-02-25 | 2016-02-26 |  |  |  |  | 60d |  |  | beggio luca | 16h |  |
| 8 | 1.1.1.1.1.2 | Registrazione traccia |  | 1d | 2016-04-19 | 2016-04-19 | 37 |  |  |  | 23d |  |  | larovere vittorio | 8h |  |
| 9 | 1.1.1.1.1.3 | **Elaborazione Traccia** |  | 23d | 2016-02-25 A | 2016-03-28 |  | 55% | 10.45d |  | 39d |  |  |  | 176h | 96h |
| 10 | 1.1.1.1.1.3.1 | Riconoscere frequenza singole note |  | 12d | 2016-02-25 A | 2016-03-11 A |  | 100% |  |  |  |  | finish no earlier than 2016-03-11 | morisco gabriele | 96h | 96h |
| 11 | 1.1.1.1.1.3.2 | Riconoscere durata singole note |  | 4d | 2016-03-14 | 2016-03-17 | 10 |  |  |  | 46d |  | start no earlier than 2016-02-18 | lanzi andrea | 32h |  |
| 12 | 1.1.1.1.1.3.3 | Richiamare tutto all'interno del programma |  | 2d | 2016-03-18 | 2016-03-21 | 33, 10 |  |  |  | 5d | 1d | start no earlier than 2016-03-18 | lanzi andrea | 16h |  |
| 13 | 1.1.1.1.1.3.4 | **Scrittura File XML** |  | 4d | 2016-03-23 | 2016-03-28 |  |  |  |  | 4d |  |  |  | 32h |  |
| 14 | 1.1.1.1.1.3.4.1 | Parser XML in base alla grammatica corretta |  | 2d | 2016-03-23 | 2016-03-24 | 12 |  |  |  | 4d | 0d | start no earlier than 2016-03-23 | lanzi andrea | 16h |  |
| 15 | 1.1.1.1.1.3.4.2 | Salvataggio in locale e inviata su server |  | 2d | 2016-03-25 | 2016-03-28 | 14 |  |  |  | 4d | 0d |  | morisco gabriele | 16h |  |
| 16 | 1.1.1.2 | **sezione: credenziali utente** |  | 6d | 2016-03-16 | 2016-03-23 |  |  |  |  | 42d |  |  |  | 48h |  |
| 17 | 1.1.1.2.1 | cambiamento email |  | 3d | 2016-03-16 | 2016-03-18 |  |  |  |  | 42d | 0d | start no earlier than 2016-03-16 | beggio luca | 24h |  |
| 18 | 1.1.1.2.2 | cambiamento password |  | 3d | 2016-03-21 | 2016-03-23 | 17 |  |  |  | 42d |  |  | beggio luca | 24h |  |
| 19 | 1.1.1.3 | **sezione: visualizzazione tag** |  | 2d | 2016-02-25 | 2016-02-26 |  |  |  |  | 0d |  |  |  | 24h |  |
| 20 | 1.1.1.3.1 | Filtro in base genere | manual | 1d | 2016-02-25 | 2016-02-25 |  |  |  |  |  |  |  | morisco gabriele | 8h |  |
| 21 | 1.1.1.3.2 | visualizza elenco di tutti i files xml sul server con link di download |  | 1d | 2016-02-26 | 2016-02-26 |  |  |  |  | 60d |  | start no earlier than 2016-02-25 | lanzi andrea | 8h |  |
| 22 | 1.1.1.3.3 | scarica zip con xml del tuo account |  | 1d | 2016-02-25 | 2016-02-25 |  |  |  |  | 61d |  |  | lanzi andrea | 8h |  |
| 23 | 1.1.2 | **area login (comunicazione con server)** |  | 12d | 2016-03-03 | 2016-03-18 |  | 92% | 1d | 2016-03-04 |  |  |  |  | 48h | 44h |
| 24 | 1.1.2.1 | login (implementazione) |  | 2d | 2016-03-04 A | 2016-03-07 A | 28 | 100% |  |  |  |  | start no earlier than 2016-03-04 | beggio luca | 16h | 16h |
| 25 | 1.1.2.2 | registrazione nuovo utente (implementazione) |  | 2d | 2016-03-08 A | 2016-03-10 A | 29 | 100% |  |  |  |  |  | beggio luca | 16h | 16h |
| 26 | 1.1.2.3 | password dimenticata (implementazione) |  | 2d | 2016-03-10 A | 2016-03-14 | 30 | 75% | 0.5d |  | 4.75d |  |  | beggio luca | 16h | 12h |

| ID | WBS | Task | Type | Duration | Start | Finish | Predecessors | Complete | Remaining | Actual start | Total slack | Free slack | Constraint | Resources | Work | Actual work |
| --- | --- | --- | --- | --- | --- | --- | --- | --- | --- | --- | --- | --- | --- | --- | --- | --- |
| 27 | 1.1.3 | **GUI** |  | 9d | 2016-03-03 A | 2016-03-15 |  | 83% | 1.5d |  |  |  |  |  | 6h | 5h |
| 28 | 1.1.3.1 | sezione login |  | 1h | 2016-03-03 A | 2016-03-03 A |  | 100% |  |  |  |  | start no earlier than 2016-03-03 | beggio luca | 1h | 1h |
| 29 | 1.1.3.2 | nuovo registrazione nuovo utente |  | 1h | 2016-03-08 A | 2016-03-08 A | 24 | 100% |  |  |  |  |  | beggio luca | 1h | 1h |
| 30 | 1.1.3.3 | sezione password dimenticata |  | 1h | 2016-03-10 A | 2016-03-10 A | 25 | 100% |  |  |  |  |  | beggio luca | 1h | 1h |
| 31 | 1.1.3.4 | sezione credenziali |  | 1h | 2016-03-14 A | 2016-03-14 A | 26 | 100% |  |  |  |  |  | beggio luca | 1h | 1h |
| 32 | 1.1.3.5 | sezione registrazione |  | 1h | 2016-03-14 A | 2016-03-14 A | 31 | 100% |  |  |  |  |  | beggio luca | 1h | 1h |
| 33 | 1.1.3.6 | sezione visualizza |  | 1h | 2016-03-14 | 2016-03-14 | 32 |  |  |  | 1.38d |  |  | beggio luca | 1h |  |
| 34 | 1.2 | **applicazione web** |  | 71.5d | 2016-02-25 | 2016-06-03 |  | 3% | 69.23d | 2016-03-14 |  |  |  |  | 544h | 16h |
| 35 | 1.2.1 | **area utente** |  | 59d | 2016-03-14 A | 2016-06-02 |  | 6% | 55.19d |  | 0.5d |  |  |  | 288h | 16h |
| 36 | 1.2.1.1 | **sezione: credenziali utente** |  | 2d | 2016-04-15 | 2016-04-18 |  |  |  |  | 23d |  |  |  | 16h |  |
| 37 | 1.2.1.1.1 | cambiamento email |  | 1d | 2016-04-18 | 2016-04-18 | 38 |  |  |  | 23d | 0d | start no earlier than 2016-02-25 | larovere vittorio | 8h |  |
| 38 | 1.2.1.1.2 | cambiamento password |  | 1d | 2016-04-15 | 2016-04-15 | 51 |  |  |  | 23d | 0d |  | larovere vittorio | 8h |  |
| 39 | 1.2.1.2 | **sezione: visualizzazione tag** |  | 23d | 2016-03-14 | 2016-04-13 |  |  |  |  | 20d |  |  |  | 56h |  |
| 40 | 1.2.1.2.1 | Filtro in base genere | manual | 4d | 2016-04-10 | 2016-04-13 |  |  |  |  |  |  |  | morisco gabriele | 32h |  |
| 41 | 1.2.1.2.2 | visualizza elenco files xml, con data e ora di creazione e con link di download |  | 2d | 2016-03-14 | 2016-03-15 |  |  |  |  | 47d | 0d | start no earlier than 2016-03-14 | morisco gabriele | 16h |  |
| 42 | 1.2.1.2.3 | scarica zip con xml del tuo account |  | 1d | 2016-03-16 | 2016-03-16 | 41 |  |  |  | 47d |  |  | morisco gabriele | 8h |  |
| 43 | 1.2.1.3 | **area login** |  | 51d | 2016-03-24 A | 2016-06-02 |  | 9% | 46.36d |  | 0.5d |  |  |  | 216h | 16h |
| 44 | 1.2.1.3.1 | login (implementazione) |  | 15d | 2016-03-24 A | 2016-05-18 | 48 | 7% | 14d |  | 0d |  | finish no earlier than 2016-04-07 | larovere vittorio; morisco gabriele | 120h | 8h |
| 45 | 1.2.1.3.2 | registrazione nuovo utente (implementazione) |  | 6d | 2016-04-07 A | 2016-06-02 | 49 | 17% | 5d |  | 0.5d |  | finish no earlier than 2016-04-14 | larovere vittorio; morisco gabriele | 88h | 8h |
| 46 | 1.2.1.3.3 | password dimenticata |  | 1d | 2016-04-08 | 2016-04-08 | 50 |  |  |  | 23d | 0d |  | larovere vittorio | 8h |  |
| 47 | 1.2.2 | **GUI** |  | 41d | 2016-03-31 | 2016-05-26 |  |  |  |  |  |  |  |  | 256h |  |
| 48 | 1.2.2.1 | sezione login |  | 80h | 2016-04-15 | 2016-04-28 |  |  |  |  | 0d |  | finish no earlier than 2016-04-28 | larovere vittorio | 80h |  |
| 49 | 1.2.2.2 | nuovo registrazione nuovo utente |  | 48h | 2016-05-19 | 2016-05-26 | 44 |  |  |  | 0d |  | finish no earlier than 2016-04-08 | larovere vittorio | 48h |  |
| 50 | 1.2.2.3 | sezione password dimenticata |  | 48h | 2016-03-31 | 2016-04-07 |  |  |  |  | 23d | 0d | finish no earlier than 2016-04-07 | larovere vittorio | 48h |  |
| 51 | 1.2.2.4 | sezione credenziali |  | 32h | 2016-04-11 | 2016-04-14 | 46 |  |  |  | 23d | 0d | start no earlier than 2016-04-11 | morisco gabriele | 32h |  |
| 52 | 1.2.2.5 | sezione visualizza |  | 48h | 2016-04-14 | 2016-04-21 |  |  |  |  | 30.5d |  | finish no earlier than 2016-04-21 | morisco gabriele | 48h |  |

| ID | WBS | Task | Type | Duration | Start | Finish | Predecessors | Total slack | Resources | Work |
| --- | --- | --- | --- | --- | --- | --- | --- | --- | --- | --- |
| 53 | 1.3 | **server** |  | 13d | 2016-03-19 | 2016-04-05 |  |  |  | 16h |
| 54 | 1.3.1 | Ricezione - Risposta Login |  | 2d | 2016-03-29 | 2016-03-30 | 15 | 4d | beggio luca | 16h |
| 55 | 1.3.2 | Ricezione Iscrizione Nuovo Utente | manual | 1d? | 2016-03-19 | 2016-03-19 |  |  |  |  |
| 56 | 1.3.3 | Modifica credenziali | manual | 1d? | 2016-03-19 | 2016-03-19 |  |  |  |  |
| 57 | 1.3.4 | Ricezione - Risposta Visualizzazione files | manual | 1d? | 2016-03-19 | 2016-03-19 |  |  |  |  |
